# 社区惠享购

Schedule from MS Project, 2020-11-08 to 2020-12-15, costs in ¥.

## Calendars

- 标准: Mon-Fri 08:00-12:00, 13:00-17:00; Sat-Sun off. Exceptions (off unless hours are given): 2020-11-07 to 2021-01-10 08:00-12:00, 13:00-17:00 (加班, recurring).

## Resources

| Resource | Rate |
| --- | --- |
| 马金鹏 | 40 |
| 林晨阳 | 40 |
| 尚格格 | 40 |
| 唐博凡 | 40 |
| 冯泽涛 | 40 |
| 马越颖 | 40 |
| 间接成本 |  |
| 储蓄金 |  |

## Schedule

| ID | WBS | Task | Type | Duration | Start | Finish | Predecessors | Resources | Work | Cost |
| --- | --- | --- | --- | --- | --- | --- | --- | --- | --- | --- |
| 1 | 1 | **社区惠享购** |  | 38d | 2020-11-08 | 2020-12-15 |  |  | 848h | 44,096 |
| 2 | 1.1 | **项目启动** |  | 4d | 2020-11-08 | 2020-11-11 |  | 间接成本 [0.1%]; 储蓄金 [0.1%] | 32h | 1,664 |
| 3 | 1.1.1 | 组建核心团队 | manual | 1d | 2020-11-08 | 2020-11-08 |  | 马金鹏 | 8h | 320 |
| 4 | 1.1.2 | 干系人分析 | manual | 1d | 2020-11-09 | 2020-11-09 |  | 林晨阳 | 8h | 320 |
| 5 | 1.1.3 | 制定里程碑计划 | manual | 1d | 2020-11-10 | 2020-11-10 |  | 马金鹏 | 8h | 320 |
| 6 | 1.1.4 | 制定项目章程 | manual | 1d | 2020-11-11 | 2020-11-11 | 3, 4, 5 | 马金鹏 | 8h | 320 |
| 7 | 1.2 | **项目规划** |  | 7d | 2020-11-11 | 2020-11-17 |  | 间接成本 [0.1%]; 储蓄金 [0.1%] | 56h | 2,912 |
| 8 | 1.2.1 | 产品构思并制定需求说明书 | manual | 1d | 2020-11-12 | 2020-11-12 | 6 | 冯泽涛 | 8h | 320 |
| 9 | 1.2.2 | 原型界面设计 | manual | 2d | 2020-11-13 | 2020-11-14 | 8 | 马越颖 | 16h | 640 |
| 10 | 1.2.3 | 创建wbs | manual | 1d | 2020-11-15 | 2020-11-15 | 9 | 林晨阳 | 8h | 320 |
| 11 | 1.2.4 | 形成范围基准 | manual | 1d | 2020-11-16 | 2020-11-16 | 10 | 唐博凡 | 8h | 320 |
| 12 | 1.2.5 | 规划时间 | manual | 1d | 2020-11-17 | 2020-11-17 | 10 | 尚格格 | 8h | 320 |
| 13 | 1.2.6 | 进行项目任务分配 | manual | 1d | 2020-11-17 | 2020-11-17 | 10, 9 | 马金鹏 | 8h | 320 |
| 14 | 1.3 | **项目执行** |  | 27d | 2020-11-18 | 2020-12-14 |  | 间接成本 [0.1%]; 储蓄金 [0.1%] | 664h | 34,528 |
| 15 | 1.3.1 | **用户端小程序** |  | 14d | 2020-11-18 | 2020-12-01 |  |  | 368h | 14,720 |
| 16 | 1.3.1.1 | **前端** |  | 10d | 2020-11-18 | 2020-11-27 |  |  | 264h | 10,560 |
| 17 | 1.3.1.1.1 | 注册微信小程序 | manual | 1d | 2020-11-18 | 2020-11-18 | 13 | 冯泽涛; 林晨阳; 马越颖; 尚格格; 唐博凡 | 40h | 1,600 |
| 18 | 1.3.1.1.2 | **前端页面各自编码** |  | 8d | 2020-11-19 | 2020-11-26 |  |  | 200h | 8,000 |
| 19 | 1.3.1.1.2.1 | 登陆首页 | manual | 5d | 2020-11-19 | 2020-11-23 | 17 | 尚格格 | 40h | 1,600 |
| 20 | 1.3.1.1.2.2 | 商品及其详情页 | manual | 5d | 2020-11-19 | 2020-11-23 | 17 | 唐博凡 | 40h | 1,600 |
| 21 | 1.3.1.1.2.3 | 用户提交信息及主页 | manual | 5d | 2020-11-19 | 2020-11-23 | 17 | 冯泽涛 | 40h | 1,600 |
| 22 | 1.3.1.1.2.4 | 订单及购买页 | manual | 5d | 2020-11-19 | 2020-11-23 | 17 | 林晨阳 | 40h | 1,600 |
| 23 | 1.3.1.1.2.5 | 购物车页面 | manual | 5d | 2020-11-19 | 2020-11-23 | 17 | 马金鹏 | 40h | 1,600 |
| 24 | 1.3.1.1.3 | 前端页面整合 | manual | 3d | 2020-11-24 | 2020-11-26 | 19, 20, 21, 22, 23 | 冯泽涛 [20%]; 林晨阳 [20%]; 马金鹏 [20%]; 尚格格 [20%]; 唐博凡 [20%] | 24h | 960 |

| ID | WBS | Task | Type | Duration | Start | Finish | Predecessors | Resources | Work | Cost |
| --- | --- | --- | --- | --- | --- | --- | --- | --- | --- | --- |
| 25 | 1.3.1.2 | **后端** |  | 10d | 2020-11-19 | 2020-11-28 |  |  | 64h | 2,560 |
| 26 | 1.3.1.2.1 | 安装数据库软件 | manual | 1d | 2020-11-19 | 2020-11-19 | 13 | 马越颖 | 8h | 320 |
| 27 | 1.3.1.2.2 | 设计所用数据库 | manual | 1d | 2020-11-20 | 2020-11-20 |  | 马越颖 | 8h | 320 |
| 28 | 1.3.1.2.3 | 建数据库 | manual | 2d | 2020-11-21 | 2020-11-22 | 27 | 马越颖 | 16h | 640 |
| 29 | 1.3.1.2.4 | **后端数据编码** |  | 4d | 2020-11-23 | 2020-11-26 |  |  | 16h | 640 |
| 30 | 1.3.1.2.4.1 | 商家列表接口编码 | manual | 0.5d | 2020-11-23 | 2020-11-23 | 28 | 马越颖 | 4h | 160 |
| 31 | 1.3.1.2.4.2 | 商品列表接口编码 | manual | 0.5d | 2020-11-23 | 2020-11-23 | 28 | 马越颖 | 4h | 160 |
| 32 | 1.3.1.2.4.3 | 订单列表接口编码 | manual | 0.5d | 2020-11-24 | 2020-11-24 | 28 | 马越颖 | 4h | 160 |
| 33 | 1.3.1.2.4.4 | 订单列表接口编码 | manual | 0.5d | 2020-11-24 | 2020-11-24 | 28 | 马越颖 | 4h | 160 |
| 34 | 1.3.1.2.5 | 后台接口测试 | manual | 1d | 2020-11-25 | 2020-11-25 | 30, 31, 32, 33 | 马越颖 | 8h | 320 |
| 35 | 1.3.1.2.6 | 书写接口规范说明 | manual | 1d | 2020-11-26 | 2020-11-26 | 34 | 马越颖 | 8h | 320 |
| 36 | 1.3.1.3 | **前后端交互** |  | 5d | 2020-11-27 | 2020-12-01 |  |  | 40h | 1,600 |
| 37 | 1.3.1.3.1 | 接收数据库数数据渲染页面 | manual | 3d | 2020-11-27 | 2020-11-29 | 24, 35 | 冯泽涛 [20%]; 林晨阳 [20%]; 马金鹏 [20%]; 尚格格 [20%]; 唐博凡 [20%] | 24h | 960 |
| 38 | 1.3.1.3.2 | 小程序整体连通 | manual | 1d | 2020-11-30 | 2020-11-30 | 37 | 马金鹏 | 8h | 320 |
| 39 | 1.3.1.3.3 | 小程序测试及优化 | manual | 1d | 2020-12-01 | 2020-12-01 | 38 | 尚格格 | 8h | 320 |
| 40 | 1.3.2 | **商家端小程序** |  | 10d | 2020-12-02 | 2020-12-11 |  |  | 216h | 8,640 |
| 41 | 1.3.2.1 | **前端** |  | 6d | 2020-12-02 | 2020-12-07 |  |  | 144h | 5,760 |
| 42 | 1.3.2.1.1 | **前端页面各自编码** |  | 4d | 2020-12-02 | 2020-12-05 |  |  | 128h | 5,120 |
| 43 | 1.3.2.1.1.1 | 商家注册页面 | manual | 4d | 2020-12-02 | 2020-12-05 | 17 | 冯泽涛 | 32h | 1,280 |
| 44 | 1.3.2.1.1.2 | 商家登陆页面 | manual | 4d | 2020-12-02 | 2020-12-05 | 17 | 马金鹏 | 32h | 1,280 |
| 45 | 1.3.2.1.1.3 | 商家上传商品页面 | manual | 4d | 2020-12-02 | 2020-12-05 | 17 | 尚格格 | 32h | 1,280 |
| 46 | 1.3.2.1.1.4 | 订单处理页面 | manual | 4d | 2020-12-02 | 2020-12-05 | 17 | 唐博凡 | 32h | 1,280 |
| 47 | 1.3.2.1.2 | 前端页面整合 | manual | 2d | 2020-12-06 | 2020-12-07 | 43, 45, 46 | 冯泽涛 [25%]; 马金鹏 [25%]; 尚格格 [25%]; 唐博凡 [25%] | 16h | 640 |
| 48 | 1.3.2.2 | **后端** |  | 6d | 2020-12-02 | 2020-12-07 |  |  | 48h | 1,920 |
| 49 | 1.3.2.2.1 | **后端数据编码** |  | 4d | 2020-12-02 | 2020-12-05 |  |  | 32h | 1,280 |
| 50 | 1.3.2.2.1.1 | 根据前端要求修改接口 | manual | 4d | 2020-12-02 | 2020-12-05 |  | 马越颖 | 32h | 1,280 |
| 51 | 1.3.2.2.2 | 后端接口测试 | manual | 1d | 2020-12-06 | 2020-12-06 | 50 | 马越颖 | 8h | 320 |
| 52 | 1.3.2.2.3 | 后端接口规范说明 | manual | 1d | 2020-12-07 | 2020-12-07 | 51 | 马越颖 | 8h | 320 |

| ID | WBS | Task | Type | Duration | Start | Finish | Predecessors | Resources | Work | Cost |
| --- | --- | --- | --- | --- | --- | --- | --- | --- | --- | --- |
| 53 | 1.3.2.3 | **前后端交互** |  | 3d | 2020-12-08 | 2020-12-10 |  |  | 24h | 960 |
| 54 | 1.3.2.3.1 | 接收数据库数据渲染页面 | manual | 1d | 2020-12-08 | 2020-12-08 | 47, 52 | 冯泽涛 [25%]; 马金鹏 [25%]; 尚格格 [25%]; 唐博凡 [25%] | 8h | 320 |
| 55 | 1.3.2.3.2 | 小程序整体连通 | manual | 1d | 2020-12-09 | 2020-12-09 | 54 | 马金鹏 | 8h | 320 |
| 56 | 1.3.2.3.3 | 小程序测试及优化 | manual | 1d | 2020-12-10 | 2020-12-10 | 55 | 马金鹏 | 8h | 320 |
| 57 | 1.3.3 | **用户端与商家端交互** |  | 1d | 2020-12-11 | 2020-12-11 |  |  | 8h | 320 |
| 58 | 1.3.3.1 | 商家上传用户端测试 | manual | 0.5d | 2020-12-11 | 2020-12-11 | 56 | 尚格格 | 4h | 160 |
| 59 | 1.3.3.2 | 用户端向商家提交订单测试 | manual | 0.5d | 2020-12-11 | 2020-12-11 | 56 | 尚格格 | 4h | 160 |
| 60 | 1.3.4 | **惠享购公众号** |  | 11d | 2020-12-02 | 2020-12-12 |  |  | 72h | 2,880 |
| 61 | 1.3.4.1 | 注册微信公众号 | manual | 1d | 2020-12-02 | 2020-12-02 | 13 | 林晨阳 | 8h | 320 |
| 62 | 1.3.4.2 | 公众号关联用户端小程序 | manual | 3d | 2020-12-03 | 2020-12-05 | 61 | 林晨阳 | 24h | 960 |
| 63 | 1.3.4.3 | 公众号商家端发布信息 | manual | 4d | 2020-12-08 | 2020-12-11 | 61 | 林晨阳 [50%]; 马越颖 [50%] | 32h | 1,280 |
| 64 | 1.3.4.4 | 公众号整体测试 | manual | 1d | 2020-12-12 | 2020-12-12 | 62, 63 | 尚格格 | 8h | 320 |
| 65 | 1.4 | **项目结尾** |  | 2d | 2020-12-13 | 2020-12-14 |  | 间接成本 [0.1%]; 储蓄金 [0.1%] | 96h | 4,992 |
| 66 | 1.4.1 | 整体项目连通测试 | manual | 1d | 2020-12-13 | 2020-12-13 | 39, 56, 62, 63 | 冯泽涛; 林晨阳; 马金鹏; 马越颖; 尚格格; 唐博凡 | 48h | 1,920 |
| 67 | 1.4.2 | 发布提交项目 | manual | 1d | 2020-12-14 | 2020-12-14 | 66 | 冯泽涛; 林晨阳; 马金鹏; 马越颖; 尚格格; 唐博凡 | 48h | 1,920 |
